# cronograma

How a schedule from MS Project changed from version to version. A marks actual dates.

## Version 1 (saved 2025-11-19)

Note of the change: Fase 1 e 2 completas: CRUDs essenciais, sistema de votação, dashboards por perfil, edição/exclusão de tópicos e respostas, melhor resposta, gestão de recados

| ID | WBS | Task | Duration | Start | Finish | Predecessors | Complete | Total float | Constraint |
| --- | --- | --- | --- | --- | --- | --- | --- | --- | --- |
| 1 | 1 | **Projeto Forum Academico** | 35.67d? | 2025-10-29 09:00 A | 2025-12-17 15:24 |  | 82% | 0d |  |
| 2 | 1.1 | **Prospecção** | 10.25d | 2025-10-29 09:00 A | 2025-11-12 11:00 A |  | 100% |  |  |
| 3 | 1.1.1 | **PTEC** | 4.25d | 2025-10-29 09:00 A | 2025-11-04 11:00 A |  | 100% |  |  |
| 4 |  | Estudar Domínio de Aplicação | 0.25d | 2025-10-29 09:00 A | 2025-10-29 11:00 A |  | 100% |  |  |
| 5 |  | Reunir-se com Fornecedor de Requsitos | 1d | 2025-10-29 11:00 A | 2025-10-30 11:00 A | 4 | 100% |  |  |
| 6 |  | Redigir PTEC | 1d | 2025-10-30 11:00 A | 2025-11-03 11:00 A | 5 | 100% |  |  |
| 7 |  | Revisar proposta técnica | 1d | 2025-11-03 11:00 A | 2025-11-04 11:00 A | 6 | 100% |  |  |
| 8 |  | Aprovar Proposta técnica | 0d | 2025-11-04 11:00 A | 2025-11-04 11:00 A | 7 | 100% |  |  |
| 9 | 1.1.2 | **Est.Prel.Tam** | 3d | 2025-11-04 11:00 A | 2025-11-07 11:00 A |  | 100% |  |  |
| 10 |  | Estimar Tamanho do Projeto | 1d | 2025-11-04 11:00 A | 2025-11-05 11:00 A | 7 | 100% |  |  |
| 11 |  | Revisar estimatica de tamanho do Projeto | 1.62d | 2025-11-05 11:00 A | 2025-11-07 11:00 A | 10 | 100% |  |  |
| 12 | 1.1.3 | **Est.Prel.Cronograma e Orçamento** | 3d | 2025-11-07 11:00 A | 2025-11-12 11:00 A |  | 100% |  |  |
| 13 |  | Elaborar Cronograma e orçamentos preliminar | 1d | 2025-11-07 11:00 A | 2025-11-10 11:00 A | 9 | 100% |  |  |
| 14 |  | Revisar cronograma e orçamento preliminares | 1d | 2025-11-10 11:00 A | 2025-11-12 11:00 A | 13 | 100% |  |  |
| 15 | 1.2 | **Análise** | 12d? | 2025-10-29 09:00 A | 2025-11-13 18:00 A |  | 100% |  |  |
| 16 | 1.2.1 | **Documento de Requisitos** | 12d? | 2025-10-29 09:00 A | 2025-11-13 18:00 A |  | 100% |  |  |
| 17 |  | Reunir-se com cliente | 1d? | 2025-10-29 09:00 A | 2025-10-31 09:00 A |  | 100% |  |  |
| 18 |  | Elaborar DRE | 1.5d? | 2025-10-31 09:00 A | 2025-11-05 09:00 A | 17 | 100% |  |  |
| 19 |  | Revisar DRE | 1.5d? | 2025-11-05 09:00 A | 2025-11-10 09:00 A | 18 | 100% |  |  |
| 20 |  | Submeter DRE para aprovação do cliente | 1d? | 2025-11-10 09:00 A | 2025-11-12 09:00 A | 19 | 100% |  |  |
| 21 | 1.2.1.5 | **MRB** | 2d? | 2025-11-12 09:00 A | 2025-11-13 18:00 A |  | 100% |  |  |
| 22 |  | Elabora MRB | 1d? | 2025-11-12 09:00 A | 2025-11-12 18:00 A | 20 | 100% |  |  |
| 23 |  | Revisar MRB | 1d? | 2025-11-13 09:00 A | 2025-11-13 18:00 A | 22 | 100% |  |  |
| 24 | 1.3 | **Projeto** | 22.82d? | 2025-11-14 16:51 | 2025-12-17 15:24 |  |  | 0d |  |
| 25 | 1.3.1 | **Diagrama de Classes** | 2.14d? | 2025-11-14 16:51 | 2025-11-19 09:00 |  |  | 0d |  |
| 26 |  | Elaborar Diagrama de Classes | 0.62d? | 2025-11-14 16:51 | 2025-11-17 13:51 | 20 |  | 0.52d |  |
| 27 |  | Atualizar MR | 0.62d? | 2025-11-18 08:00 | 2025-11-19 09:00 | 26 |  | 0d |  |
| 28 | 1.3.2 | **Modelo Entidade Relacionamento** | 20.68d? | 2025-11-19 09:00 | 2025-12-17 15:24 |  |  | 0d |  |
| 29 |  | Elaborar MER | 1d? | 2025-11-19 09:00 | 2025-12-03 09:00 | 27 |  | 0d | finish no earlier than 2025-11-20 18:00 |
| 30 |  | Revisar MER | 1.25d? | 2025-12-10 16:19 | 2025-12-17 15:24 | 29 |  | 0d |  |
| 31 | 1.4 | **Implementação** | 25.36d? | 2025-11-12 09:00 A | 2025-12-17 11:54 |  | 92% | 0.31d |  |
| 32 | 1.4.1 | **Release 01** | 6d? | 2025-11-12 09:00 A | 2025-11-19 18:00 A |  | 100% |  |  |
| 33 | 1.4.1.1 | **Implementação** | 6d? | 2025-11-12 09:00 A | 2025-11-19 18:00 A |  | 100% |  |  |
| 34 |  | Implementar RFS01 | 0.5d | 2025-11-12 09:00 A | 2025-11-12 14:00 A | 30 | 100% |  |  |
| 35 |  | Implementar RFS02 | 0.5d | 2025-11-13 09:00 A | 2025-11-13 14:00 A | 34 | 100% |  |  |
| 36 |  | Implementar RFS03 | 0.5d? | 2025-11-14 09:00 A | 2025-11-14 14:00 A | 35 | 100% |  |  |
| 37 |  | Implementar RFS04 | 0.5d? | 2025-11-17 09:00 A | 2025-11-17 14:00 A | 36 | 100% |  |  |
| 38 |  | Implementar RFS05 | 0.5d? | 2025-11-18 09:00 A | 2025-11-18 14:00 A | 37 | 100% |  |  |
| 39 |  | Implementar RFS06 | 0.5d? | 2025-11-19 09:00 A | 2025-11-19 14:00 A | 38 | 100% |  |  |
| 40 |  | Implementar RFS07 | 0.25d | 2025-11-19 14:00 A | 2025-11-19 16:00 A | 39 | 100% |  |  |
| 41 |  | Implementar RFS08 | 0.25d | 2025-11-19 16:00 A | 2025-11-19 18:00 A | 40 | 100% |  |  |
| 42 | 1.4.1.2 | **Teste** | 3.16d | 2025-11-12 09:00 A | 2025-11-17 10:16 A |  | 100% |  |  |
| 43 |  | Testar RFC01 | 3.54d | 2025-11-12 09:00 A | 2025-11-17 10:16 A | 30 | 100% |  |  |
| 44 |  | Testar RFC02 | 3.16d | 2025-11-12 09:00 A | 2025-11-17 10:14 A | 30 | 100% |  |  |
| 45 | 1.4.2 | **Release 02** | 8.88d? | 2025-11-19 14:00 A | 2025-12-02 12:00 A |  | 100% |  |  |
| 46 | 1.4.2.1 | **Implementação** | 8.38d? | 2025-11-20 08:00 A | 2025-12-02 12:00 A |  | 100% |  |  |
| 47 |  | Implementar RFS09 | 1.75d | 2025-11-20 08:00 A | 2025-11-24 09:00 A | 41 | 100% |  |  |
| 48 |  | Implementar RFS10 | 1.75d | 2025-11-24 09:00 A | 2025-11-26 10:00 A | 47 | 100% |  |  |
| 49 |  | Implementar RFS11 | 0.12d? | 2025-11-26 10:00 A | 2025-11-26 11:00 A | 48 | 100% |  |  |
| 50 |  | Implementar RFS12 | 0.12d? | 2025-11-26 11:00 A | 2025-11-26 12:00 A | 49 | 100% |  |  |
| 51 |  | Implementar RFS13 | 0.5d? | 2025-11-27 08:00 A | 2025-11-27 14:00 A | 50 | 100% |  |  |
| 52 |  | Implementar RFS14 | 1.75d | 2025-11-26 10:00 A | 2025-11-28 11:00 A | 51 | 100% |  |  |
| 53 |  | Implementar RFS15 | 0.12d? | 2025-11-28 11:00 A | 2025-11-28 12:00 A | 52 | 100% |  |  |
| 54 |  | Implementar RFS16 | 1.75d | 2025-11-28 11:00 A | 2025-12-02 12:00 A | 53 | 100% |  |  |
| 55 | 1.4.2.2 | **Teste** | 7.88d | 2025-11-19 14:00 A | 2025-12-01 12:00 A |  | 100% |  |  |
| 56 |  | Teste RFC03 | 6.5d | 2025-11-19 14:00 A | 2025-12-01 12:00 A | 41 | 100% |  |  |
| 57 |  | Testar RFC04 | 6.5d | 2025-11-19 14:00 A | 2025-12-01 12:00 A | 41 | 100% |  |  |
| 58 | 1.4.3 | **Release 03** | 7d? | 2025-12-02 13:00 A | 2025-12-11 12:00 A |  | 100% |  |  |
| 59 | 1.4.3.1 | **Implementação** | 7d? | 2025-12-02 13:00 A | 2025-12-11 12:00 A |  | 100% |  |  |
| 60 |  | Implementar RFS17 | 1.2d | 2025-12-02 13:00 A | 2025-12-03 14:37 A | 54 | 100% |  |  |
| 61 |  | Implementar RFS18 | 1.17d? | 2025-12-05 09:00 A | 2025-12-08 10:21 A | 60 | 100% |  |  |
| 62 |  | Implementar RFS19 | 0.25d? | 2025-12-09 10:00 A | 2025-12-09 12:00 A | 61 | 100% |  |  |
| 63 |  | Implementar RFS20 | 0.25d? | 2025-12-09 13:00 A | 2025-12-09 15:00 A | 62 | 100% |  |  |
| 64 |  | Implementar RFS21 | 0.38d? | 2025-12-10 08:00 A | 2025-12-10 11:00 A | 63 | 100% |  |  |
| 65 |  | Implementar RFS22 | 0.25d? | 2025-12-10 10:00 A | 2025-12-10 12:00 A | 64 | 100% |  |  |
| 66 |  | Implementar RFS23 | 0.25d? | 2025-12-11 10:00 A | 2025-12-11 12:00 A | 65 | 100% |  |  |
| 67 | 1.4.3.2 | **Teste** | 6.42d | 2025-12-02 13:00 A | 2025-12-10 16:19 A |  | 100% |  |  |
| 68 |  | Teste RFC05 | 2d | 2025-12-03 14:39 A | 2025-12-05 14:39 A | 54 | 100% |  |  |
| 69 |  | Teste RFC06 | 2d | 2025-12-02 13:00 A | 2025-12-10 16:19 A | 54 | 100% |  |  |
| 70 |  | Teste RFC07 | 0.09d | 2025-12-03 10:01 A | 2025-12-03 10:46 A | 54 | 100% |  |  |

| ID | WBS | Task | Duration | Start | Finish | Predecessors | Complete | Total float |
| --- | --- | --- | --- | --- | --- | --- | --- | --- |
| 71 |  | Teste RFC08 | 0.15d | 2025-12-05 14:39 A | 2025-12-05 15:52 A | 54 | 100% |  |
| 72 | 1.4.4 | **Release 04** | 3.99d? | 2025-12-11 13:00 A | 2025-12-17 11:54 |  | 33% | 0.31d |
| 73 | 1.4.4.1 | **Implementação** | 2.5d? | 2025-12-11 13:00 A | 2025-12-15 17:00 |  | 70% | 0.04d |
| 74 |  | Implementar RFS24 | 1d? | 2025-12-11 13:00 A | 2025-12-12 12:00 A | 66 | 100% |  |
| 75 |  | Implementar RFS25 | 0.25d? | 2025-12-12 13:00 A | 2025-12-12 15:00 A | 74 | 100% |  |
| 76 |  | Implementar RFS26 | 0.25d? | 2025-12-12 15:00 A | 2025-12-12 17:00 A | 75 | 100% |  |
| 77 |  | Implementar RFS27 | 0.25d? | 2025-12-12 17:00 A | 2025-12-15 10:00 A | 76 | 100% |  |
| 78 |  | Implementar RFS28 | 0.25d | 2025-12-15 10:00 | 2025-12-15 12:00 | 77 |  | 0.04d |
| 79 |  | Implementar RFS29 | 0.25d? | 2025-12-15 13:00 | 2025-12-15 15:00 | 78 |  | 0.04d |
| 80 |  | Implementar RFS30 | 0.25d? | 2025-12-15 15:00 | 2025-12-15 17:00 | 79 |  | 0.04d |
| 81 | 1.4.4.2 | **Teste** | 3.99d | 2025-12-11 13:00 | 2025-12-17 11:54 |  |  | 0.31d |
| 82 |  | Teste RFC09 | 0.94d | 2025-12-12 08:00 | 2025-12-17 11:54 | 66 |  | 0d |
| 83 |  | Teste RFC10 | 0.94d | 2025-12-12 11:28 | 2025-12-17 09:04 | 66 |  | 0.67d |
| 84 |  | Teste RFC11 | 0.94d | 2025-12-11 13:00 | 2025-12-12 11:28 | 66 |  | 3.37d |
| 85 | 1.5 | **Monitoramento e Controle** | 1.76d | 2025-12-15 17:00 | 2025-12-17 15:07 |  |  | 0.04d |
| 86 |  | Acompanhar Projeto | 1.88d | 2025-12-15 17:00 | 2025-12-17 15:07 | 80 |  | 0.04d |
| 87 | 1.6 | **Gerencia de Configuração** | 1d? | 2025-10-29 09:00 | 2025-10-29 18:00 |  |  | 34.67d |
| 88 |  | Elaborar branch | 1d? | 2025-10-29 09:00 | 2025-10-29 18:00 |  |  | 34.67d |
| 89 |  | Realizar Merge da Branch x Trunk | 1d? | 2025-10-29 09:00 | 2025-10-29 18:00 |  |  | 34.67d |

## Version 2 (saved 2025-11-26)

Note of the change: status reposrt pdf

Last finish stays 2025-12-17. Complete tasks 50 → 58.

Removed: 84 Teste RFC11

Changed:

| ID | Task | Start | Finish | Duration | Complete | Total float |
| --- | --- | --- | --- | --- | --- | --- |
| 1 | **Projeto Forum Academico** |  |  |  | 82% → 95% |  |
| 31 | **Implementação** |  | 2025-12-17 11:54 A |  | 92% → 100% | 0.31d → none |
| 72 | **Release 04** |  | 2025-12-17 11:54 A |  | 33% → 100% | 0.31d → none |
| 73 | **Implementação** |  | 2025-12-15 17:00 A |  | 70% → 100% | 0.04d → none |
| 78 | Implementar RFS28 | 2025-12-15 10:00 A | 2025-12-15 12:00 A |  | 0% → 100% | 0.04d → none |
| 79 | Implementar RFS29 | 2025-12-15 13:00 A | 2025-12-15 15:00 A |  | 0% → 100% | 0.04d → none |
| 80 | Implementar RFS30 | 2025-12-15 15:00 A | 2025-12-15 17:00 A |  | 0% → 100% | 0.04d → none |
| 81 | **Teste** | 2025-12-11 13:00 → 2025-12-12 08:00 A (+1d) | 2025-12-17 11:54 A | 3.99d → 3.36d | 0% → 100% | 0.31d → none |
| 82 | Teste RFC09 | 2025-12-12 08:00 A | 2025-12-17 11:54 A |  | 0% → 100% | 0d → none |
| 83 | Teste RFC10 | 2025-12-12 11:28 A | 2025-12-17 09:04 A |  | 0% → 100% | 0.67d → none |
| 84 | **Monitoramento e Controle** | 2025-12-15 17:00 A | 2025-12-17 15:07 → 2025-12-16 14:12 A (-1d) | 1.76d → 0.65d | 0% → 100% | 0.04d → none |
| 85 | Acompanhar Projeto | 2025-12-15 17:00 A | 2025-12-17 15:07 → 2025-12-16 14:12 A (-1d) | 1.88d → 0.77d | 0% → 100% | 0.04d → none |
| 86 | **Gerencia de Configuração** | 2025-10-29 09:00 A | 2025-10-29 18:00 A |  | 0% → 100% | 34.67d → none |
| 87 | Elaborar branch | 2025-10-29 09:00 A | 2025-10-29 18:00 A |  | 0% → 100% | 34.67d → none |
| 88 | Realizar Merge da Branch x Trunk | 2025-10-29 09:00 A | 2025-10-29 18:00 A |  | 0% → 100% | 34.67d → none |
